How a schedule from MS Project XML changed from version to version. A marks actual dates.

## Version 1 (saved 2026-07-11)

Note of the change: Taller MS Project: cronograma y presupuesto casa primer piso (resuelto)

| ID | WBS | Task | Duration | Start | Finish | Predecessors |
| --- | --- | --- | --- | --- | --- | --- |
| 1 | 1 | **Proyecto** | 0d | 2026-07-06 | 2026-10-05 |  |
| 2 | 1.1 | **Preliminares** | 0d | 2026-07-06 | 2026-07-07 |  |
| 3 |  | Inicio del proyecto | 0d | 2026-07-06 | 2026-07-06 |  |
| 4 |  | localización y replanteo | 2d | 2026-07-06 | 2026-07-07 | 3 |
| 5 | 1.2 | **Cimentación** | 0d | 2026-07-08 | 2026-07-31 |  |
| 6 |  | Excavación en tierra a mano, no incluye retiro | 2d | 2026-07-08 | 2026-07-09 | 4 |
| 7 |  | Retiro material sobrante | 1d | 2026-07-10 | 2026-07-10 | 6 |
| 8 |  | Solado e=0.05m | 4d | 2026-07-13 | 2026-07-16 | 7 |
| 9 |  | Relleno y compactación cimientos material importado solado e=0.05 m | 3d | 2026-07-17 | 2026-07-21 | 8 |
| 10 |  | Figurado y armada acero 60000 psi vaciado zapatas en concreto de 3000 psi | 6d | 2026-07-22 | 2026-07-29 | 9 |
| 11 |  | Viga de cimentación de 3000 psi (0.25x0.25) | 1d | 2026-07-30 | 2026-07-30 | 10 |
| 12 |  | Losa de contrapiso en concreto 3000 psi, e=0.1m | 1d | 2026-07-31 | 2026-07-31 | 11 |
| 13 | 1.3 | **Estructura primer piso** | 0d | 2026-08-03 | 2026-08-28 |  |
| 14 |  | Figurado y armada acero de Columnas primer piso | 4d | 2026-08-03 | 2026-08-06 | 12 |
| 15 |  | Encofrado y vaciado columnas primer piso | 4d | 2026-08-07 | 2026-08-12 | 14 |
| 16 |  | Figurado y armada acero losa entrepiso | 2d | 2026-08-13 | 2026-08-14 | 15 |
| 17 |  | Losa de entrepiso concreto de 3000 psi e=0.05m incluye encofrado | 10d | 2026-08-17 | 2026-08-28 | 16 |
| 18 | 1.4 | **Muros primer piso** | 0d | 2026-08-31 | 2026-09-17 |  |
| 19 |  | Muro en bloque cerámico (0.15x0.13x0.24) | 8d | 2026-08-31 | 2026-09-09 | 17 |
| 20 |  | Pañete en interiores primer piso, e=0.02 m, 1:3 | 6d | 2026-09-10 | 2026-09-17 | 19 |
| 21 | 1.5 | **Cubierta metálica con teja en policarbonato** | 0d | 2026-09-18 | 2026-10-05 |  |
| 22 |  | Suministro e instalación Perfil cajón HR C 120X60 mm - 1.5 mm C.16 | 3d | 2026-09-18 | 2026-09-22 | 20 |
| 23 |  | Suministro e instalación de lámina Policarbonato Alveolar 8mm | 6d | 2026-09-23 | 2026-09-30 | 22 |
| 24 |  | Suministro e instalación de canaletas | 1d | 2026-10-01 | 2026-10-01 | 23 |
| 25 |  | Bajante aguas lluvias | 1d | 2026-10-02 | 2026-10-02 | 24 |
| 26 |  | Final del proyecto | 0d | 2026-10-05 | 2026-10-05 | 25 |

## Version 2 (saved 2026-07-11)

Note of the change: Materiales como costo directo para total exacto ($39.08M); nota en guia

Last finish stays 2026-10-05.

Changed:

| ID | Task | Other |
| --- | --- | --- |
| 4 | localización y replanteo | resources Puntilla 2" 1/2 a 3" 1/2 [0.72%]; Madera medio cerco [14.4%]; Herramienta menor; Equipo topografico precision; Mano de obra cuadrilla topografica [4.5%] → Puntilla 2" 1/2 a 3" 1/2; Madera medio cerco; Herramienta menor; Equipo topografico precision; Mano de obra cuadrilla topografica [4.5%] |
| 8 | Solado e=0.05m | resources Mezcla de concreto pobre de 3000psi [1.41%]; Mano de obra cuadrilla aa [25.19%]; Herramienta menor 4 → Mezcla de concreto pobre de 3000psi; Mano de obra cuadrilla aa [25.19%]; Herramienta menor 4 |
| 9 | Relleno y compactación cimientos material importado solado e=0.05 m | resources Material de rio sucio-tierra [9.84%]; Mano de obra albeñeleria 1A [68.33%]; Pison; Volqueta transporte petreos 1-10 km → Material de rio sucio-tierra; Mano de obra albeñeleria 1A [68.33%]; Pison; Volqueta transporte petreos 1-10 km |
| 10 | Figurado y armada acero 60000 psi vaciado zapatas en concreto de 3000 psi | resources Acero de 420 Mpa [848.15%]; Alambre negro [65.88%]; Mano de obra cuadrilla aa [102.93%]; Segueta sin marco [32.94%]; Herramienta menor 5 → Acero de 420 Mpa; Alambre negro; Mano de obra cuadrilla aa [102.93%]; Segueta sin marco; Herramienta menor 5 |
| 11 | Viga de cimentación de 3000 psi (0.25x0.25) | resources Puntilla 2" 1/2 a 3" 1/2 [3.38%]; Tabla 1x 10 x 300 otobo [18.59%]; Vareta 2" x 2" x 3m otobo [9.02%]; Mezcla concreto 3000 psi [3.55%]; Mano de obra cuadrilla aa 2+1 [249.28%]; vibrador electrico; Herramienta menor 6 → Puntilla 2" 1/2 a 3" 1/2; Tabla 1x 10 x 300 otobo; Vareta 2" x 2" x 3m otobo; Mezcla concreto 3000 psi; Mano de obra cuadrilla aa 2+1 [249.28%]; vibrador electrico; Herramienta menor 6 |
| 12 | Losa de contrapiso en concreto 3000 psi, e=0.1m | resources Puntilla 2" [14.4%]; Tabla 1 x 10 x 300 [72%]; Mezcla de concreto 1:2:3 21 Mpa [8.28%]; Mano de obra albañeleria 3a 1o [225%]; vibrador electrico; Volqueta transporte petreos 1-10 km; Herramienta menor 7 → Puntilla 2"; Tabla 1 x 10 x 300; Mezcla de concreto 1:2:3 21 Mpa; Mano de obra albañeleria 3a 1o [225%]; vibrador electrico; Volqueta transporte petreos 1-10 km; Herramienta menor 7 |
| 14 | Figurado y armada acero de Columnas primer piso | resources Acero de 420 Mpa [463.09%]; Alambre negro [35.97%]; Mano de obra cuadrilla aa [84.3%]; Segueta sin marco [17.98%]; Herramienta menor 8 → Acero de 420 Mpa; Alambre negro; Mano de obra cuadrilla aa [84.3%]; Segueta sin marco; Herramienta menor 8 |
| 15 | Encofrado y vaciado columnas primer piso | resources Mezcla concreto de 3000 psi [2.61%]; formaleta; andamios; Herramienta menor 9; vibrador electrico; Mano de obra cuadrilla aa 2+1 [58.51%] → Mezcla concreto de 3000 psi; formaleta; andamios; Herramienta menor 9; vibrador electrico; Mano de obra cuadrilla aa 2+1 [58.51%] |
| 16 | Figurado y armada acero losa entrepiso | resources Acero de 420 Mpa [260.3%]; Alambre negro [20.22%]; Mano de obra cuadrilla aa [94.77%]; Segueta sin marco [10.11%]; Herramienta menor 10 → Acero de 420 Mpa; Alambre negro; Mano de obra cuadrilla aa [94.77%]; Segueta sin marco; Herramienta menor 10 |
| 17 | Losa de entrepiso concreto de 3000 psi e=0.05m incluye encofrado | resources Mezcla concreto de 3000 psi [6.39%]; Caseton de guadua [43.47%]; formaleta; Andamio; Herramienta menor 11; vibrador electrico; mano de obra cuadrilla aa 3+1 [94.7%] → Mezcla concreto de 3000 psi; Caseton de guadua; formaleta; Andamio; Herramienta menor 11; vibrador electrico; mano de obra cuadrilla aa 3+1 [94.7%] |
| 19 | Muro en bloque cerámico (0.15x0.13x0.24) | resources Impermeable sika imprimante [42.08%]; Bloque ceramico [4334.65%]; Mortero de pega 1:4 [2.81%]; Herramienta menor 12; Mezcla grouting 3000psi [0.87%]; Andamio; mano de obra cuadrilla aa 5 [219.19%] → Impermeable sika imprimante; Bloque ceramico; Mortero de pega 1:4; Herramienta menor 12; Mezcla grouting 3000psi; Andamio; mano de obra cuadrilla aa 5 [219.19%] |
| 20 | Pañete en interiores primer piso, e=0.02 m, 1:3 | resources Mortero de pega 1:4 [6.16%]; mano de obra cuadrilla aa 6 [183.27%]; Herramienta menor 13; Andamio; Volqueta transporte materiales petreos → Mortero de pega 1:4; mano de obra cuadrilla aa 6 [183.27%]; Herramienta menor 13; Andamio; Volqueta transporte materiales petreos |
| 22 | Suministro e instalación Perfil cajón HR C 120X60 mm - 1.5 mm C.16 | resources Thinner [5.28%]; Anticorrosivo rojo [8.45%]; Soldadura 6011 x 1/8” [17.53%]; Perfil hr c120mmx60mm‑1.5 [35.9%]; Mano obra albañilería 2 ayudante [22%]; Mano obra carp.taller ayudante‑1 ofi [220%]; Mano obra pintura 1 ayudante‑1 ofi [44%]; Pulidora con piedra o disco; Soldador eléctrico; Oxicorte (oxígeno‑acetileno); Andamio metálico tubular; Herramienta menor 14 → Thinner; Anticorrosivo rojo; Soldadura 6011 x 1/8”; Perfil hr c120mmx60mm‑1.5; Mano obra albañilería 2 ayudante [22%]; Mano obra carp.taller ayudante‑1 ofi [220%]; Mano obra pintura 1 ayudante‑1 ofi [44%]; Pulidora con piedra o disco; Soldador eléctrico; Oxicorte (oxígeno‑acetileno); Andamio metálico tubular; Herramienta menor 14 |
| 23 | Suministro e instalación de lámina Policarbonato Alveolar 8mm | resources Torn autoge. 3/4x‑3/16 [65.2%]; Lámina policarbonato 8 mm [5.4%]; Remate u 6x2010 mm policarb [10.11%]; Silicona transparent. 11 oz [0.65%]; Cinta aluminio industrial [1.96%]; Mano obra albañilería 2 ayudante‑1 ofi [88.29%]; Herramienta menor 15; Andamio metálico tubular; Cruceta andamio → Torn autoge. 3/4x‑3/16; Lámina policarbonato 8 mm; Remate u 6x2010 mm policarb; Silicona transparent. 11 oz; Cinta aluminio industrial; Mano obra albañilería 2 ayudante‑1 ofi [88.29%]; Herramienta menor 15; Andamio metálico tubular; Cruceta andamio |
| 24 | Suministro e instalación de canaletas | resources Igas gris (sellante) 5 kg [1.44%]; Canaleta 43 de 4.00 [7.2%]; Torn met. Canaleta 43 [7.2%]; Mano obra albañilería 3 ayudante‑1 oficina [30%]; Herramienta menor 16; Andamio metálico tubular; Cruceta andamio → Igas gris (sellante) 5 kg; Canaleta 43 de 4.00; Torn met. Canaleta 43; Mano obra albañilería 3 ayudante‑1 oficina [30%]; Herramienta menor 16; Andamio metálico tubular; Cruceta andamio |
| 25 | Bajante aguas lluvias | resources Bajante pvc cuadrado [5.39%]; Bajante pvc soporte [24.3%]; Soldadura pvc 1/4 gls [0.16%]; Torn p/mad 1 x 6 [48.6%]; Limpiador pvc 760‑g 1/4 gl [0.16%]; Mano obra albañilería 1 ayudante‑1 ofi [60.75%]; Herramienta menor 17; Andamio metálico tubular; Cruceta andamio → Bajante pvc cuadrado; Bajante pvc soporte; Soldadura pvc 1/4 gls; Torn p/mad 1 x 6; Limpiador pvc 760‑g 1/4 gl; Mano obra albañilería 1 ayudante‑1 ofi [60.75%]; Herramienta menor 17; Andamio metálico tubular; Cruceta andamio |

## Version 3 (saved 2026-07-11)

Note of the change: Costo total correcto: materiales+costos como Costo fijo (MS Project los ignoraba como recurso tipo Costo)

Last finish stays 2026-10-05.

Changed:

| ID | Task | Other |
| --- | --- | --- |
| 4 | localización y replanteo | resources Puntilla 2" 1/2 a 3" 1/2; Madera medio cerco; Herramienta menor; Equipo topografico precision; Mano de obra cuadrilla topografica [4.5%] → Mano de obra cuadrilla topografica [4.5%] |
| 6 | Excavación en tierra a mano, no incluye retiro | resources Herramienta menor 2; Mano de obra cuadrilla aa [80.1%] → Mano de obra cuadrilla aa [80.1%] |
| 7 | Retiro material sobrante | resources Escombrera; Mano de obra cuadrilla aa [27.65%]; volqueta; Herramienta menor 3 → Mano de obra cuadrilla aa [27.65%] |
| 8 | Solado e=0.05m | resources Mezcla de concreto pobre de 3000psi; Mano de obra cuadrilla aa [25.19%]; Herramienta menor 4 → Mano de obra cuadrilla aa [25.19%] |
| 9 | Relleno y compactación cimientos material importado solado e=0.05 m | resources Material de rio sucio-tierra; Mano de obra albeñeleria 1A [68.33%]; Pison; Volqueta transporte petreos 1-10 km → Mano de obra albeñeleria 1A [68.33%] |
| 10 | Figurado y armada acero 60000 psi vaciado zapatas en concreto de 3000 psi | resources Acero de 420 Mpa; Alambre negro; Mano de obra cuadrilla aa [102.93%]; Segueta sin marco; Herramienta menor 5 → Mano de obra cuadrilla aa [102.93%] |
| 11 | Viga de cimentación de 3000 psi (0.25x0.25) | resources Puntilla 2" 1/2 a 3" 1/2; Tabla 1x 10 x 300 otobo; Vareta 2" x 2" x 3m otobo; Mezcla concreto 3000 psi; Mano de obra cuadrilla aa 2+1 [249.28%]; vibrador electrico; Herramienta menor 6 → Mano de obra cuadrilla aa 2+1 [249.28%] |
| 12 | Losa de contrapiso en concreto 3000 psi, e=0.1m | resources Puntilla 2"; Tabla 1 x 10 x 300; Mezcla de concreto 1:2:3 21 Mpa; Mano de obra albañeleria 3a 1o [225%]; vibrador electrico; Volqueta transporte petreos 1-10 km; Herramienta menor 7 → Mano de obra albañeleria 3a 1o [225%] |
| 14 | Figurado y armada acero de Columnas primer piso | resources Acero de 420 Mpa; Alambre negro; Mano de obra cuadrilla aa [84.3%]; Segueta sin marco; Herramienta menor 8 → Mano de obra cuadrilla aa [84.3%] |
| 15 | Encofrado y vaciado columnas primer piso | resources Mezcla concreto de 3000 psi; formaleta; andamios; Herramienta menor 9; vibrador electrico; Mano de obra cuadrilla aa 2+1 [58.51%] → Mano de obra cuadrilla aa 2+1 [58.51%] |
| 16 | Figurado y armada acero losa entrepiso | resources Acero de 420 Mpa; Alambre negro; Mano de obra cuadrilla aa [94.77%]; Segueta sin marco; Herramienta menor 10 → Mano de obra cuadrilla aa [94.77%] |
| 17 | Losa de entrepiso concreto de 3000 psi e=0.05m incluye encofrado | resources Mezcla concreto de 3000 psi; Caseton de guadua; formaleta; Andamio; Herramienta menor 11; vibrador electrico; mano de obra cuadrilla aa 3+1 [94.7%] → mano de obra cuadrilla aa 3+1 [94.7%] |
| 19 | Muro en bloque cerámico (0.15x0.13x0.24) | resources Impermeable sika imprimante; Bloque ceramico; Mortero de pega 1:4; Herramienta menor 12; Mezcla grouting 3000psi; Andamio; mano de obra cuadrilla aa 5 [219.19%] → mano de obra cuadrilla aa 5 [219.19%] |
| 20 | Pañete en interiores primer piso, e=0.02 m, 1:3 | resources Mortero de pega 1:4; mano de obra cuadrilla aa 6 [183.27%]; Herramienta menor 13; Andamio; Volqueta transporte materiales petreos → mano de obra cuadrilla aa 6 [183.27%] |
| 22 | Suministro e instalación Perfil cajón HR C 120X60 mm - 1.5 mm C.16 | resources Thinner; Anticorrosivo rojo; Soldadura 6011 x 1/8”; Perfil hr c120mmx60mm‑1.5; Mano obra albañilería 2 ayudante [22%]; Mano obra carp.taller ayudante‑1 ofi [220%]; Mano obra pintura 1 ayudante‑1 ofi [44%]; Pulidora con piedra o disco; Soldador eléctrico; Oxicorte (oxígeno‑acetileno); Andamio metálico tubular; Herramienta menor 14 → Mano obra albañilería 2 ayudante [22%]; Mano obra carp.taller ayudante‑1 ofi [220%]; Mano obra pintura 1 ayudante‑1 ofi [44%] |
| 23 | Suministro e instalación de lámina Policarbonato Alveolar 8mm | resources Torn autoge. 3/4x‑3/16; Lámina policarbonato 8 mm; Remate u 6x2010 mm policarb; Silicona transparent. 11 oz; Cinta aluminio industrial; Mano obra albañilería 2 ayudante‑1 ofi [88.29%]; Herramienta menor 15; Andamio metálico tubular; Cruceta andamio → Mano obra albañilería 2 ayudante‑1 ofi [88.29%] |
| 24 | Suministro e instalación de canaletas | resources Igas gris (sellante) 5 kg; Canaleta 43 de 4.00; Torn met. Canaleta 43; Mano obra albañilería 3 ayudante‑1 oficina [30%]; Herramienta menor 16; Andamio metálico tubular; Cruceta andamio → Mano obra albañilería 3 ayudante‑1 oficina [30%] |
| 25 | Bajante aguas lluvias | resources Bajante pvc cuadrado; Bajante pvc soporte; Soldadura pvc 1/4 gls; Torn p/mad 1 x 6; Limpiador pvc 760‑g 1/4 gl; Mano obra albañilería 1 ayudante‑1 ofi [60.75%]; Herramienta menor 17; Andamio metálico tubular; Cruceta andamio → Mano obra albañilería 1 ayudante‑1 ofi [60.75%] |
